# LOG650 G20 Rune — 110-sentraler: kapasitetsstyring og bemanningsdimensjonering

Schedule from MS Project XML, 2026-03-07 to 2026-05-31, A marks actual dates.

## Schedule

| ID | WBS | Task | Type | Duration | Start | Finish | Predecessors | Complete | Actual start | Actual finish | Constraint |
| --- | --- | --- | --- | --- | --- | --- | --- | --- | --- | --- | --- |
| 2 | 1 | **FASE 1 — Initiering** |  | 0d |  |  |  | 100% | 2026-01-12 | 2026-03-07 |  |
| 3 | 1.1 | L0 — Proposal: problemstilling, metode, datagrunnlag, WBS |  | 10d |  |  |  | 100% | 2026-01-12 | 2026-03-07 |  |
| 4 | 1.2 | M1 — Godkjent proposal | milestone | 0d |  |  | 3 |  |  |  | must finish on 2026-03-15 |
| 5 | 2 | **FASE 2 — Planlegging** |  | 0d |  |  | 3 | 80% |  |  |  |
| 6 | 2.1 | L1 — Avklart problemstilling, mal og avgrensninger |  | 1d |  |  |  | 100% | 2026-03-07 | 2026-03-07 |  |
| 7 | 2.2 | L2 — Modellvalg: Erlang-C (M/M/c) identifisert og begrunnet |  | 1d |  |  |  | 100% | 2026-03-07 | 2026-03-07 |  |
| 8 | 2.3 | L3 — Litteratursok: planlegging (sokestrategi, databaser, avgrensning) |  | 3d | 2026-03-07 | 2026-03-10 |  | 70% |  |  |  |
| 9 | 2.4 | L4 — Dataplan: datakilder, variabler, kvalitet, tilgangsstatus |  | 3d | 2026-03-07 | 2026-03-10 |  | 70% |  |  |  |
| 10 | 2.5 | L5 — Godkjent prosjektstyringsplan (dette dokumentet) |  | 5d | 2026-03-07 | 2026-03-14 |  | 90% |  |  |  |
| 11 | 2.6 | L6 — MS Project Gantt-diagram med referanseplan (baseline) |  | 2d | 2026-03-12 | 2026-03-14 | 10 | 50% |  |  |  |
| 12 | 2.7 | M2 — Godkjent prosjektplan + Gantt med referanseplan | milestone | 0d |  |  | 11 |  |  |  | must finish on 2026-03-15 |
| 13 | 3 | **FASE 3 — Gjennomforing** |  | 0d |  |  | 12 |  |  |  |  |
| 14 | 3.1 | L7 — Rapportskjelett + introduksjon og problemstilling v1 |  | 5d | 2026-03-16 | 2026-03-22 | 12 |  |  |  |  |
| 15 | 3.2 | L8 – Datainnhenting: LEO/BRIS-data 2020–2025, DSB-årsrapporter, SSB-befolkningsdata; datavalidering og rådatastruktur |  | 5d | 2026-03-16 | 2026-03-22 | 12 |  |  |  |  |
| 16 | 3.3 | L8b — ROS/beredskapsanalyse-gjennomgang: dokumentanalyse av dimensjoneringsgrunnlag |  | 10d | 2026-03-16 | 2026-03-29 | 12 |  |  |  |  |
| 17 | 3.4 | M3 — Rapportskjelett + intro v1 klar | milestone | 0d |  |  | 14 |  |  |  | must finish on 2026-03-22 |
| 33 | 3.5 | L8c – Eksplorativ dataanalyse (EDA): belastningsmonstre per skift og time, hendelsestypefordeling, Poisson-test på ankomstprosess |  | 10d | 2026-03-16 | 2026-03-29 | 15 |  |  |  |  |
| 18 | 3.6 | L9 — Parameterestimering: ankomstrate (lambda) og haandteringstid (mu) per skiftperiode |  | 5d | 2026-03-30 | 2026-04-05 | 33 |  |  |  |  |
| 19 | 3.7 | M4 — Data innhentet, validert og EDA ferdig | milestone | 0d |  |  | 18 |  |  |  | must finish on 2026-03-29 |
| 20 | 3.8 | L10 — Erlang-C modellering: bemanningsanbefaling per skiftperiode med VL-korreksjon |  | 5d | 2026-03-30 | 2026-04-05 | 18 |  |  |  |  |
| 21 | 3.9 | L11 – Modellvalidering: kontrollere at Erlang-C-resultatene gjenspeiler målt belastning; sammenligning modell vs. observert kø/ventetid |  | 10d | 2026-03-30 | 2026-04-12 | 20 |  |  |  |  |
| 34 | 3.10 | L11b – Sensitivitetsanalyse: effekt av endringer i ankomstrate, håndteringstid, bemanning og servicekrav; ring-flom som ekstremscenario |  | 5d | 2026-04-13 | 2026-04-19 | 21 |  |  |  |  |
| 22 | 3.11 | L12 — Teorikapittel: koeteori, Erlang-C, kapasitetsstyring i beredskapsoperative systemer |  | 10d | 2026-03-30 | 2026-04-12 | 12 |  |  |  |  |
| 23 | 3.12 | M5 — Erlang-C modell implementert og validert | milestone | 0d |  |  | 34 |  |  |  | must finish on 2026-04-10 |
| 24 | 3.13 | L13 — Benchmarking: modellanbefaling vs. faktisk bemanning, alle 12 norske 110-sentraler |  | 5d | 2026-04-20 | 2026-04-26 | 34 |  |  |  |  |
| 25 | 3.14 | L14 — Generaliseringsanalyse: hendelsesvolum, innbyggertall og areal som prediktorer |  | 10d | 2026-04-06 | 2026-04-19 | 24 |  |  |  |  |
| 26 | 3.15 | L15 — Resultater og diskusjon: rapportutkast inkl. operative saertrekk og modellbegrensninger |  | 5d | 2026-04-13 | 2026-04-19 | 25 |  |  |  |  |
| 27 | 3.16 | L16 — Godkjent hoved-utkast + peer review (skriftlig tilbakemelding til annen gruppe) |  | 10d | 2026-04-20 | 2026-05-03 | 26 |  |  |  |  |
| 28 | 3.17 | M6 — Godkjent hoved-utkast + peer review gjennomfart | milestone | 0d |  |  | 27 |  |  |  | must finish on 2026-04-30 |

Notes:
- 3: Innlevert 7. mars 2026. Avventer formell godkjenning.
- 4: Frist: 15. mars 2026. Krav: C-niva.
- 6: Fullfort 7. mars 2026.
- 7: Fullfort 7. mars 2026.
- 8: Litteraturliste Excel opprettet 8. mars 2026.
- 9: Dataplan inkludert i prosjektstyringsplan seksjon 3.7.
- 10: Plan v1.4 — 467 linjer. Inkluderer WBS, risiko, dataplan, Gantt-oversikt.
- 11: XML-fil generert 8. mars 2026. Importer i MS Project og sett baseline.
- 12: Frist: 15. mars 2026. Krav: C-niva.
- 14: Uke 12 (16.-22. mars). Mal fra HiMolde.
- 15: Uke 12. Datainnhenting og validering av rådata.
- 16: Uke 12-13. Kritisk gjennomgang: dimensjonerende hendelser, forutsetninger, sammenligning med LEO/BRIS.
- 17: Frist: 22. mars 2026. Intern milepael.
- 33: Uke 12-13. Kritisk sti. EDA, Poisson-test, toppbelastning, samtidige hendelser.
- 18: Uke 13. Avhenger av L8c (EDA). Python: scipy, pandas.
- 19: Frist: 29. mars 2026. Intern milepael.
- 20: Uke 14. c_effektiv = c_total - 1. Python-implementasjon.
- 21: Uke 14-15. Poisson goodness-of-fit, ring-flom som sensitivitetscase.
- 34: Uke 15. Ring-flom som ekstremscenario. Avhenger av L11.
- 22: Uke 14-15. Kan parallellkjores med L11. APA 7th norsk.
- 23: Frist: 10. april 2026. Intern milepael.
- 24: Uke 15. DSB-aarsrapporter. Standardisert mot per-innbygger og per-hendelse.
- 25: Uke 15-16. Nasjonal dimensjoneringsmodell-ambisjon. Omfang tilpasses tilgjengelige data.
- 26: Uke 16. Beredskapsperspektiv: lav utnyttelse ≠ overbemanning.
- 27: Uke 17-18 (20. april - 3. mai). Obligatorisk del av arbeidskrav M6.
- 28: Frist: slutten av april 2026. Krav: C-niva.

| ID | WBS | Task | Type | Duration | Start | Finish | Predecessors | Constraint |
| --- | --- | --- | --- | --- | --- | --- | --- | --- |
| 29 | 4 | **FASE 4 — Avslutning** |  | 0d |  |  | 28 |  |
| 30 | 4.1 | L17 — Ferdigstilt rapport inkl. kode pa GitHub |  | 20d | 2026-05-04 | 2026-05-31 | 28 |  |
| 31 | 4.2 | M7 — Ferdigstilt rapport innlevert | milestone | 0d |  |  | 30 | must finish on 2026-05-31 |
| 32 | 4.3 | L18 — Muntlig eksamen | milestone | 0d |  |  | 31 | must finish on 2026-06-05 |

Notes:
- 30: Uke 19-22 (4. - 31. mai). Sluttlakkering, vedlegg, kode-repo.
- 31: Frist: 31. mai 2026. Krav: B-niva. Rapport + kode pa GitHub.
- 32: Tidlig juni 2026. Krav: B-niva.
